# caintegrator_project_plan_v3

Schedule from MS Project, 2011-08-01 to 2012-07-26, A marks actual dates.
NIH\NCI

## Calendars

- Standard: Mon-Fri 08:00-12:00, 13:00-17:00; Sat-Sun off. Exceptions (off unless hours are given): 2011-09-05, 2011-11-11, 2011-11-24 to 2011-11-25, 2011-12-26 to 2012-01-02.

## Resources

| Resource |
| --- |
| JP |
| TBH |
| SJ/JP |
| Qut |
| Quy |
| SJ |
| HS |
| Systems |
| MAX |
| system |
| Secuirity Team |
| Coung/Systems |
| will |
| 45 |
| Andy |
| WF |
| ALL |
| Santosh |
| TBD |
| UPT team |
| UCSF |
| caArray |
| JH |
| systens |

## Schedule

| ID | WBS | Task | Type | Duration | Start | Finish | Predecessors | Complete | Constraint | Resources | Work | Actual work |
| --- | --- | --- | --- | --- | --- | --- | --- | --- | --- | --- | --- | --- |
| 1 | 1 | **Adhoc Generic Support** |  | 16d | 2011-08-01 A | 2011-08-22 A |  | 100% |  |  |  |  |
| 2 | 1.1 | TCGA Data Support |  | 2d | 2011-08-01 A | 2011-08-02 A |  | 100% |  |  |  |  |
| 3 | 1.2 | TCGA Data on caIntegrator |  | 4d | 2011-08-17 A | 2011-08-22 A |  | 100% | start no earlier than 2011-08-17 |  |  |  |
| 4 | 1.3 | MATKC Support | milestone | 0d | 2011-08-01 A | 2011-08-01 A |  | 100% |  |  |  |  |
| 5 | 2 | **CaIntegrator Version 1.3.1** |  | 73d? | 2011-08-15 A | 2011-11-29 A |  | 100% |  |  | 718.86h | 718.86h |
| 6 | 2.1 | **JIRA CAINT-1011 508 Compliance** |  | 13d | 2011-08-15 A | 2011-08-31 A |  | 100% |  |  | 56h | 56h |
| 7 | 2.1.1 | Common Accenture Profile Dev/QA |  | 1d | 2011-08-15 A | 2011-08-15 A |  | 100% | start no earlier than 2011-08-15 | Quy | 8h | 8h |
| 8 | 2.1.2 | Identify 508 issues to be fixed and create JIRA user story tasks for each on DEV and QA. |  | 3d | 2011-08-22 A | 2011-08-24 A | 7 | 100% |  | JP | 24h | 24h |
| 9 | 2.1.3 | Fix TABLE tag in caBIO search form. |  | 0.5d | 2011-08-29 A | 2011-08-29 A | 8 | 100% |  | JP | 4h | 4h |
| 10 | 2.1.4 | Fix TABLE tag in gene list search form. |  | 0.5d | 2011-08-29 A | 2011-08-29 A | 9 | 100% |  | JP | 4h | 4h |
| 11 | 2.1.5 | Fix ALT tags in caBIO search form |  | 0.5d | 2011-08-30 A | 2011-08-30 A | 10 | 100% |  | JP | 4h | 4h |
| 12 | 2.1.6 | Fix ALT tags in study summary page |  | 0.5d | 2011-08-30 A | 2011-08-30 A | 11 | 100% |  | JP | 4h | 4h |
| 13 | 2.1.7 | Fix TABLE header in registeration page |  | 0.5d | 2011-08-31 A | 2011-08-31 A | 12 | 100% |  | JP | 4h | 4h |
| 14 | 2.1.8 | Fix TABLE in study summary page. |  | 0.5d | 2011-08-31 A | 2011-08-31 A | 13 | 100% |  | JP | 4h | 4h |
| 15 | 2.2 | **Ongoing maintenance and bug fixes** |  | 18d? | 2011-08-31 A | 2011-09-26 A |  | 100% |  |  | 64h | 64h |
| 16 | 2.2.1 | ADF platform issues |  | 2d | 2011-08-31 A | 2011-09-01 A |  | 100% | start no earlier than 2011-08-31 | JP | 16h | 16h |
| 17 | 2.2.2 | ECAT Prep |  | 2d | 2011-09-02 A | 2011-09-06 A | 16 | 100% |  | SJ; JP | 32h | 32h |
| 18 | 2.2.3 | prepare a point release for section 508 compliance. |  | 2d | 2011-09-19 A | 2011-09-20 A |  | 100% | start no earlier than 2011-09-19 | JP | 16h | 16h |
| 19 | 2.2.4 | Bug fix for typo error and new tag (RC2) |  | 1d? | 2011-09-26 A | 2011-09-26 A |  | 100% |  |  |  |  |
| 20 | 2.3 | QA RC1 |  | 7d | 2011-09-21 A | 2011-09-29 A | 18 | 100% |  | HS | 56h | 56h |
| 21 | 2.4 | **JIRA-CAINT-1047 - Resolve Appscan Issues** |  | 26d | 2011-09-30 A | 2011-11-04 A |  | 100% |  | HS | 424h | 424h |
| 22 | 2.4.1 | Resolve existing medium issues |  | 2d | 2011-09-30 A | 2011-10-03 A | 20 | 100% |  | JP | 16h | 16h |
| 23 | 2.4.2 | Run Appscan |  | 1d | 2011-10-03 A | 2011-10-03 A |  | 100% | start no earlier than 2011-10-03 | Secuirity Team | 8h | 8h |
| 24 | 2.4.3 | Fix medium issues |  | 7d | 2011-10-04 A | 2011-10-12 A | 23 | 100% |  | JP | 56h | 56h |
| 25 | 2.4.4 | Run new Appscan to verify |  | 1d | 2011-10-13 A | 2011-10-13 A | 24 | 100% |  | JP | 8h | 8h |
| 26 | 2.4.5 | Fix all additional medium issues |  | 9d | 2011-10-14 A | 2011-10-26 A | 25 | 100% |  | JP | 72h | 72h |
| 27 | 2.4.6 | Run new Appscan to verify |  | 1d | 2011-10-27 A | 2011-10-27 A | 26 | 100% |  | Systems | 8h | 8h |
| 28 | 2.4.7 | Fix issues from Appscan |  | 2d | 2011-10-28 A | 2011-10-31 A | 27 | 100% |  | JP | 16h | 16h |
| 29 | 2.4.8 | Full Appscan to verify |  | 1d | 2011-11-01 A | 2011-11-01 A | 28 | 100% |  | Systems | 8h | 8h |
| 30 | 2.4.9 | JIRA-CAINT-1066 - Bug fix (Ajax token missing) |  | 2d | 2011-11-02 A | 2011-11-03 A | 29 | 100% |  | JP | 16h | 16h |
| 31 | 2.4.10 | New tag (RC4) for 1.3.1 |  | 1d | 2011-11-04 A | 2011-11-04 A | 30 | 100% |  | JP | 8h | 8h |
| 32 | 2.5 | QA RC4 |  | 6d | 2011-11-07 A | 2011-11-15 A | 21 | 100% |  | HS [114.3%] | 54.86h | 54.86h |
| 33 | 2.6 | Release - Stage/QA/Appscan/Prod/QA |  | 8d | 2011-11-16 A | 2011-11-29 A | 32 | 100% |  | Systems | 64h | 64h |

| ID | WBS | Task | Duration | Start | Finish | Predecessors | Complete | Remaining | Total slack | Constraint | Resources | Work | Actual work |
| --- | --- | --- | --- | --- | --- | --- | --- | --- | --- | --- | --- | --- | --- |
| 34 | 3 | **CaIntegrator Version 1.4** | 249d? | 2011-08-01 A | 2012-07-26 |  | 43% | 141.46d? | 0d |  |  | 3416h | 1456h |
| 35 | 3.1 | Version 1.4 planning/priortization | 2d | 2011-08-01 A | 2011-08-02 A |  | 100% |  |  |  |  |  |  |
| 36 | 3.2 | **JIRA CAINT-1015 Tech Stack Upgrade** | 133d? | 2011-08-03 A | 2012-02-17 | 35 | 92% | 10.04d? | 114d |  |  | 824h | 760h |
| 37 | 3.2.1 | Planning | 2d | 2011-08-03 A | 2011-08-04 A |  | 100% |  |  |  | JP | 16h | 16h |
| 38 | 3.2.2 | CI to Jenkins | 2d | 2011-09-07 A | 2011-09-08 A | 37, 55 | 100% |  |  |  | JP | 16h | 16h |
| 39 | 3.2.3 | ANT 1.8 | 3d | 2011-09-09 A | 2011-09-13 A | 38 | 100% |  |  |  | JP | 24h | 24h |
| 40 | 3.2.4 | Support for Version 1.3.1 RC1 | 2d | 2011-09-20 A | 2011-09-21 A | 18 | 100% |  |  |  | JP | 16h | 16h |
| 41 | 3.2.5 | JIRA CAINT-1055 Migration from nexus | 9d | 2011-10-06 A | 2011-10-18 A | 39 | 100% |  |  |  | MAX | 72h | 72h |
| 42 | 3.2.6 | JIRA CAINT-1058 Implement Artifact Configuration | 9d | 2011-10-26 A | 2011-11-07 A | 41 | 100% |  |  |  | MAX | 72h | 72h |
| 43 | 3.2.7 | JIRA CAINT-(1065,1070) Bugs, JBOSS vulnerability and resolve, IE issue | 14d | 2011-11-07 A | 2011-11-29 A | 31 | 100% |  |  |  | JP | 112h | 112h |
| 44 | 3.2.8 | JIRA CAINT-(1059,1012) PTE form, JBOSS upgrade | 8d | 2011-11-08 A | 2011-11-18 A | 42 | 100% |  |  |  | MAX | 64h | 64h |
| 45 | 3.2.9 | JIRA CAINT(1060,1061, 1010) build track setup Anthill Pro 3, Jenkins CI, Test | 27d | 2011-11-21 A | 2012-01-06 A | 44 | 100% |  |  |  | MAX | 216h | 216h |
| 46 | 3.2.10 | Debug and Test AHP3.0 | 3d | 2012-01-06 A | 2012-01-11 A | 45 | 100% |  |  |  | ALL | 24h | 24h |
| 47 | 3.2.11 | JIRA CAINT(1086) caIntegrator caArray compatibiity. | 4d | 2012-01-06 A | 2012-01-12 A | 45 | 100% |  |  |  | MAX | 32h | 32h |
| 48 | 3.2.12 | JIRA CAINT(1085) Phase -1 Add UPT deployment config and instructions to the DEV/QA/tiers PTE. | 3d | 2012-01-11 A | 2012-01-13 A | 45 | 100% |  |  |  | JP | 24h | 24h |
| 49 | 3.2.13 | Tech Stack upgrade to QA | 9d | 2012-01-13 A | 2012-01-25 A |  | 100% |  |  | start no earlier than 2012-01-13 | Systems | 72h | 72h |
| 50 | 3.2.14 | Fix the issues with tech stack upgrade on QA | 3d | 2012-01-26 A | 2012-01-30 A | 49 | 100% |  |  |  |  |  |  |
| 51 | 3.2.15 | UPT Upgrade to JBOSS 5.0 | 1d? | 2012-02-08 | 2012-02-08 |  |  |  | 0d | start no earlier than 2012-02-08 | UPT team | 8h |  |
| 52 | 3.2.16 | JIRA CAINT(1085) Phase -2 Add UPT deployment config and instructions to the DEV/QA/tiers PTE. | 3d | 2012-02-09 | 2012-02-13 | 51, 84 |  |  | 0d |  | JP | 24h |  |
| 53 | 3.2.17 | Test QA tier | 4d | 2012-02-14 | 2012-02-17 | 52 |  |  | 114d |  | HS | 32h |  |
| 54 | 3.3 | **Ongoing maintenance and bug fixes** | 125d? | 2011-08-02 A | 2012-02-06 A |  | 100% |  |  |  |  | 304h | 304h |
| 55 | 3.3.1 | ADF platform issues | 2d | 2011-08-31 A | 2011-09-01 A |  | 100% |  |  | start no earlier than 2011-08-31 | JP | 16h | 16h |
| 56 | 3.3.2 | Data issues with training tier | 3d | 2011-09-23 A | 2011-09-27 A |  | 100% |  |  | start no earlier than 2011-09-23 | JP | 24h | 24h |
| 57 | 3.3.3 | Xenoline Requirements Gathering | 10d | 2011-11-07 A | 2011-11-21 A |  | 100% |  |  | start no earlier than 2011-11-07 | SJ | 80h | 80h |
| 58 | 3.3.4 | caDSR requirements for caIntegrator (Meeting with Denise) | 3d | 2011-12-14 A | 2011-12-16 A |  | 100% |  |  | start no earlier than 2011-12-14 | SJ | 24h | 24h |
| 59 | 3.3.5 | JIRA CAINT-1075 Error on copyNumber data deployments | 3d | 2011-11-30 A | 2011-12-02 A | 43 | 100% |  |  |  | JP | 24h | 24h |
| 60 | 3.3.6 | JIRA CAINT-986 Integration with IGV 2.0 | 3d | 2011-12-05 A | 2011-12-07 A | 59 | 100% |  |  |  | JP | 24h | 24h |
| 61 | 3.3.7 | JIRA CAINT-1083 BioPortals Tiger Team requirements. | 4d | 2011-12-21 A | 2012-01-03 A |  | 100% |  |  | start no earlier than 2011-12-21 | JP | 32h | 32h |
| 62 | 3.3.8 | JIRA CAINT-1081 Agilent 44K deployment | 4d | 2012-01-04 A | 2012-01-09 A | 61 | 100% |  |  |  | JP | 32h | 32h |
| 63 | 3.3.9 | Feasibility of patch release to Prod (Bioportal team feedback) | 1d? | 2011-08-02 A | 2011-08-02 A |  | 100% |  |  | start no earlier than 2011-08-02 | SJ | 8h | 8h |
| 64 | 3.3.10 | JIRA CAINT-964 - Not able to view IGV when not logged in | 3d | 2012-01-16 A | 2012-01-18 A | 48 | 100% |  |  |  | JP | 24h | 24h |
| 65 | 3.3.11 | MATKC Support | 2d | 2012-02-03 A | 2012-02-06 A |  | 100% |  |  | start no earlier than 2012-02-03 | JP | 16h | 16h |

| ID | WBS | Task | Duration | Start | Finish | Predecessors | Complete | Remaining | Total slack | Free slack | Constraint | Resources | Work | Actual work |
| --- | --- | --- | --- | --- | --- | --- | --- | --- | --- | --- | --- | --- | --- | --- |
| 66 | 3.4 | **TRANSCEND Feature implementation** | 148d? | 2011-10-25 A | 2012-05-30 |  | 21% | 116.47d? | 0d |  |  |  | 1832h | 392h |
| 67 | 3.4.1 | Refine requirements for permission model | 3d | 2011-10-25 A | 2011-10-27 A |  | 100% |  |  |  | start no earlier than 2011-10-25 | SJ | 24h | 24h |
| 68 | 3.4.2 | Create wireframe for permission model | 2d | 2011-10-28 A | 2011-10-31 A | 67 | 100% |  |  |  |  | Andy | 16h | 16h |
| 69 | 3.4.3 | Demo (internal team) wireframe for permission model | 1d? | 2011-11-01 A | 2011-11-01 A | 68 | 100% |  |  |  |  | WF | 8h | 8h |
| 70 | 3.4.4 | Discussion to finalize the requirements with TRANSCEND (for permissions) | 6d | 2011-11-02 A | 2011-11-09 A | 69 | 100% |  |  |  |  | SJ | 48h | 48h |
| 71 | 3.4.5 | Finalize Archive User Stories | 6d | 2011-11-22 A | 2011-12-01 A |  | 100% |  |  |  | start no earlier than 2011-11-22 | SJ | 48h | 48h |
| 72 | 3.4.6 | Permission Model - discussion and documentation | 3d | 2011-12-08 A | 2011-12-12 A |  | 100% |  |  |  | start no earlier than 2011-12-08 | JP | 24h | 24h |
| 73 | 3.4.7 | JIRA CAINT-1078 TRANSCEND - authorization user story CSM investigation | 7d | 2011-12-13 A | 2011-12-21 A | 60, 72 | 100% |  |  |  |  | JP | 56h | 56h |
| 74 | 3.4.8 | caArray/caIntegrator permission Architecure review | 3d? | 2011-12-19 A | 2011-12-21 A |  | 100% |  |  |  | start no earlier than 2011-12-19 | ALL | 24h | 24h |
| 75 | 3.4.9 | Create sample studies on caIntegrator | 3d | 2012-01-03 A | 2012-01-05 A | 74 | 100% |  |  |  | start no earlier than 2012-01-03 | SJ | 24h | 24h |
| 76 | 3.4.10 | **Version Control and Archive** | 30d | 2012-01-12 A | 2012-02-23 |  | 29% | 21.43d | 69.6d |  |  |  | 280h | 80h |
| 77 | 3.4.10.1 | JIRA CAINT-1023 -Version control (create shell study) | 11d | 2012-01-12 A | 2012-01-27 | 47 | 91% | 1d | 12.6d | 0d |  | MAX | 88h | 80h |
| 78 | 3.4.10.2 | Bugs from 1023 - 1098 | 7d | 2012-01-27 | 2012-02-07 | 77 |  |  | 12.6d | 0d |  | MAX | 56h |  |
| 79 | 3.4.10.3 | JIRA CAINT-1024 Version control (Archive) | 7d | 2012-02-07 | 2012-02-16 | 78 |  |  | 12.6d | 0d |  | MAX | 56h |  |
| 80 | 3.4.10.4 | QA - Version Control & Archive | 5d | 2012-02-16 | 2012-02-23 | 79 |  |  | 69.6d |  |  | HS | 40h |  |
| 81 | 3.4.10.5 | UAT forVersion Control and Archive | 5d | 2012-02-16 | 2012-02-23 | 79 |  |  | 69.6d |  |  | UCSF | 40h |  |
| 82 | 3.4.11 | Finalize Architecture for permission model | 1d? | 2012-02-01 | 2012-02-01 |  |  |  | 5d | 0d | start no earlier than 2012-02-01 | Santosh | 8h |  |
| 83 | 3.4.12 | **Permission and Role base security** | 70d | 2012-02-02 A | 2012-05-09 | 82 | 7% | 65.27d | 0d |  |  |  | 592h | 40h |
| 84 | 3.4.12.1 | JIRA CAINT-1078 TRANSCEND - authorization user story CSM investigation | 5d | 2012-02-02 A | 2012-02-08 A | 48 | 100% |  |  |  |  | JP | 40h | 40h |
| 85 | 3.4.12.2 | JIRA CAINT-1093 - Implementation:Role based security in caIntegrator to support TRANSCEND | 55d | 2012-02-14 | 2012-04-30 | 84, 52 |  |  | 0d |  |  | JP | 440h |  |
| 86 | 3.4.12.3 | Sample Data Set from UCSF | 2d | 2012-02-20 | 2012-02-21 |  |  |  | 56d |  | start no earlier than 2012-02-20 | UCSF | 16h |  |
| 87 | 3.4.12.4 | QA - Permission and Role based security | 7d | 2012-05-01 | 2012-05-09 | 85 |  |  | 0d |  |  | HS | 56h |  |
| 88 | 3.4.12.5 | UAT for role based security | 5d | 2012-05-01 | 2012-05-07 | 85 |  |  | 2d |  |  | UCSF | 40h |  |
| 89 | 3.4.13 | **Automatic Refresh with caArray** | 41.6d? | 2012-02-16 | 2012-04-13 |  |  |  | 12.6d |  |  |  | 312h |  |
| 90 | 3.4.13.1 | JIRA CAINT-1094 - Design agreement with caArray | 2d | 2012-02-16 | 2012-02-20 | 79 |  |  | 12.6d | 0d |  | JP; caArray | 32h |  |
| 91 | 3.4.13.2 | JIRA CAINT-1094 - Implementation: Automatic Refresh with caArray | 25d | 2012-02-20 | 2012-03-26 | 90 |  |  | 12.6d | 6.6d |  | MAX | 200h |  |
| 92 | 3.4.13.3 | JIRA CAINT-1094 - caArray Team complete API | 1d | 2012-04-03 | 2012-04-03 |  |  |  | 6d | 0d | start no earlier than 2012-04-03 | caArray | 8h |  |
| 93 | 3.4.13.4 | JIRA CAINT-1094 - Integration with caArray Automatic Refresh Completion | 5d | 2012-04-04 | 2012-04-10 | 92, 91 |  |  | 6d | 0d |  | MAX | 40h |  |
| 94 | 3.4.13.5 | QA - Automatic Refresh with caArray | 3d | 2012-04-11 | 2012-04-13 | 93 |  |  | 33d |  |  | HS | 24h |  |
| 95 | 3.4.13.6 | UAT for Automatic Refresh | 1d? | 2012-04-11 | 2012-04-11 | 93 |  |  | 35d |  |  | UCSF | 8h |  |

| ID | WBS | Task | Duration | Start | Finish | Predecessors | Total slack | Constraint | Resources | Work |
| --- | --- | --- | --- | --- | --- | --- | --- | --- | --- | --- |
| 96 | 3.4.14 | **Single Sign-On (caArray and caIntegrator)** | 43d? | 2012-04-02 | 2012-05-30 |  | 0d |  |  | 368h |
| 97 | 3.4.14.1 | CBIIT Installation of CAS/open LDAP | 1d? | 2012-04-02 | 2012-04-02 |  | 42d | start no earlier than 2012-04-02 | system | 8h |
| 98 | 3.4.14.2 | JIRA CAINT-1095 Single Sign-on | 30d | 2012-04-11 | 2012-05-22 | 93 | 6d |  | MAX | 240h |
| 99 | 3.4.14.3 | JIRA CAINT-1095 Single Sign-on | 9d | 2012-05-10 | 2012-05-22 | 83 | 0d |  | JP | 72h |
| 100 | 3.4.14.4 | Integration with caArray | 3d | 2012-05-23 | 2012-05-25 | 99 | 0d |  | MAX | 24h |
| 101 | 3.4.14.5 | QA -Single Sign-On (caArray and caIntegrator) | 3d | 2012-05-28 | 2012-05-30 | 100 | 0d |  |  |  |
| 102 | 3.4.14.6 | UAT for Single Sign-On (caArray and caIntegrator) | 3d | 2012-05-28 | 2012-05-30 | 100 | 0d |  | UCSF | 24h |
| 103 | 3.5 | **Release to Prod (1.4)** | 41d? | 2012-05-31 | 2012-07-26 |  | 0d |  |  | 456h |
| 104 | 3.5.1 | **Prep for Release** | 12d? | 2012-05-31 | 2012-06-15 |  | 0d |  |  | 176h |
| 105 | 3.5.1.1 | Appscan on Dev | 2d | 2012-05-31 | 2012-06-01 | 66 | 0d |  | Systems | 16h |
| 106 | 3.5.1.2 | Fix Any issues from Appscan | 5d | 2012-06-04 | 2012-06-08 | 105 | 5d |  | JP | 40h |
| 107 | 3.5.1.3 | 508 compliance check | 3d | 2012-06-04 | 2012-06-06 | 105 | 7d |  | MAX | 24h |
| 108 | 3.5.1.4 | Documentation Updates | 10d | 2012-06-04 | 2012-06-15 | 105 | 0d |  | JH | 80h |
| 109 | 3.5.1.5 | Prep: Announcements and other updates (landing page etc) | 1d | 2012-06-04 | 2012-06-04 | 105 | 9d |  | SJ | 8h |
| 110 | 3.5.1.6 | Release Notes | 1d? | 2012-06-04 | 2012-06-04 | 105 | 9d |  | SJ | 8h |
| 111 | 3.5.2 | Integration Test | 10d | 2012-06-18 | 2012-06-29 | 104 | 0d |  | HS | 80h |
| 112 | 3.5.3 | **RC1** | 6d | 2012-07-02 | 2012-07-09 | 111 | 0d |  |  | 72h |
| 113 | 3.5.3.1 | RC1 to Stage | 3d | 2012-07-02 | 2012-07-04 | 111 | 0d |  | Systems | 24h |
| 114 | 3.5.3.2 | QA | 3d | 2012-07-05 | 2012-07-09 | 113 | 0d |  | HS | 24h |
| 115 | 3.5.3.3 | Appscan | 3d | 2012-07-02 | 2012-07-04 | 111 | 16d |  | Systems | 24h |
| 116 | 3.5.4 | **RC2** | 10d | 2012-07-10 | 2012-07-23 |  | 0d |  |  | 104h |
| 117 | 3.5.4.1 | Fix any Issue | 4d | 2012-07-10 | 2012-07-13 | 114 | 0d |  | JP | 32h |
| 118 | 3.5.4.2 | RC2 to Stage | 3d | 2012-07-16 | 2012-07-18 | 117 | 0d |  | Systems | 24h |
| 119 | 3.5.4.3 | QA | 3d | 2012-07-19 | 2012-07-23 | 118 | 0d |  | HS | 24h |
| 120 | 3.5.4.4 | Appscan | 3d | 2012-07-19 | 2012-07-23 | 118 | 0d |  | Systems | 24h |
| 121 | 3.5.5 | Prod Release | 3d | 2012-07-24 | 2012-07-26 | 116 | 0d |  | Systems | 24h |
| 122 | 4 | NOT INCLUDED (Generic Platform, NBIA , Performance eval) | 1d? | 2011-08-01 | 2011-08-01 |  | 248d |  |  |  |
